# Charlie_A

Schedule from MS Project, 2020-07-22 to 2021-04-22, 5 hours a day, costs in ৳, A marks actual dates.

## Calendars

- Standard: Mon-Thu 08:00-12:00, 13:00-17:00; Fri-Sat off; Sun 08:00-12:00, 13:00-17:00. Exceptions (off unless hours are given): 2020-07-30 to 2020-08-01 (Eid), 2020-08-11 (Jonmastami), 2020-08-15 (National Mourning Day), 2020-08-30 (Ashura), 2020-10-16 to 2020-10-31 (PL), 2020-11-01 to 2020-11-21 (Term End Exam), 2020-11-22 to 2020-11-28 (Leave), 2020-11-29 to 2020-12-14 (Industrial Training), 2020-12-15 to 2021-02-05 (Winter Exercise), 2021-03-26 to 2021-04-03 (Mid Break).

## Resources

| Resource | Cost per use |
| --- | --- |
| Lt Isfar |  |
| Lt Naim |  |
| Lt Yamin |  |
| Lt Usubbir |  |
| PC | 20000 |
| Portable Server(3 TB SSD) | 20000 |

## Schedule

| ID | WBS | Task | Type | Duration | Start | Finish | Predecessors | Complete | Remaining | Total slack | Resources | Work | Actual work | Cost | Actual cost |
| --- | --- | --- | --- | --- | --- | --- | --- | --- | --- | --- | --- | --- | --- | --- | --- |
| 1 | 1 | **Smart Note Case** |  | 174d | 2020-07-22 A | 2021-04-22 |  | 30% | 122d | 0d |  | 2880h | 880h | 57,000 | 46,000 |
| 2 | 1.1 | **Initialization** |  | 19d | 2020-07-22 A | 2020-08-09 A |  | 100% |  |  |  | 380h | 380h |  |  |
| 3 | 1.1.1 | Group Discussion |  | 1d | 2020-07-22 A | 2020-07-22 A |  | 100% |  |  | Lt Isfar; Lt Naim; Lt Usubbir; Lt Yamin | 20h | 20h |  |  |
| 4 | 1.1.2 | Brain Storming |  | 5d | 2020-07-22 A | 2020-07-27 A | 3 | 100% |  |  | Lt Isfar; Lt Naim; Lt Usubbir; Lt Yamin | 100h | 100h |  |  |
| 5 | 1.1.3 | Idea Collection |  | 5d | 2020-07-27 A | 2020-08-02 A | 4 | 100% |  |  | Lt Isfar; Lt Naim; Lt Usubbir; Lt Yamin | 100h | 100h |  |  |
| 6 | 1.1.4 | Idea Approval |  | 1d | 2020-08-02 A | 2020-08-03 A | 5 | 100% |  |  | Lt Isfar; Lt Naim; Lt Usubbir; Lt Yamin | 20h | 20h |  |  |
| 7 | 1.1.5 | Project Proposal |  | 7d | 2020-08-03 A | 2020-08-09 A | 6 | 100% |  |  | Lt Isfar; Lt Naim; Lt Usubbir; Lt Yamin | 140h | 140h |  |  |
| 8 | 1.1.6 | Project Approval | milestone | 0d | 2020-08-09 A | 2020-08-09 A | 7 | 100% |  |  | Lt Isfar; Lt Naim; Lt Usubbir; Lt Yamin |  |  |  |  |
| 9 | 1.2 | **Plan** |  | 33d | 2020-08-09 A | 2020-09-09 A |  | 100% |  |  |  | 500h | 500h | 46,000 | 46,000 |
| 10 | 1.2.1 | **Scheme And Feedback** |  | 33d | 2020-08-09 A | 2020-09-09 A |  | 100% |  |  |  | 500h | 500h | 46,000 | 46,000 |
| 11 | 1.2.1.1 | **First Phase** |  | 9d | 2020-08-09 A | 2020-08-18 A |  | 100% |  |  |  | 180h | 180h |  |  |
| 12 | 1.2.1.1.1 | Group Study About Project |  | 5d | 2020-08-09 A | 2020-08-13 A | 8 | 100% |  |  | Lt Isfar; Lt Naim; Lt Usubbir; Lt Yamin | 100h | 100h |  |  |
| 13 | 1.2.1.1.2 | Feature Comparision and Evaluation |  | 1d | 2020-08-16 A | 2020-08-16 A | 12 | 100% |  |  | Lt Isfar; Lt Naim; Lt Usubbir; Lt Yamin | 20h | 20h |  |  |
| 14 | 1.2.1.1.3 | Actual user effectiveness |  | 1d | 2020-08-16 A | 2020-08-17 A | 13 | 100% |  |  | Lt Isfar; Lt Naim; Lt Usubbir; Lt Yamin | 20h | 20h |  |  |
| 15 | 1.2.1.1.4 | Budget Discussion |  | 1d | 2020-08-17 A | 2020-08-17 A | 14 | 100% |  |  | Lt Usubbir; Lt Yamin; Lt Isfar; Lt Naim | 20h | 20h |  |  |
| 16 | 1.2.1.1.5 | Initializing Approach |  | 1d | 2020-08-17 A | 2020-08-18 A | 15 | 100% |  |  | Lt Isfar; Lt Naim; Lt Usubbir; Lt Yamin | 20h | 20h |  |  |
| 17 | 1.2.1.1.6 | First Phase Finalization | milestone | 0d | 2020-08-18 A | 2020-08-18 A | 16 | 100% |  |  | Lt Isfar; Lt Naim; Lt Usubbir; Lt Yamin |  |  |  |  |
| 18 | 1.2.1.2 | **Second phase** |  | 24d | 2020-08-18 A | 2020-09-09 A |  | 100% |  |  |  | 320h | 320h | 46,000 | 46,000 |
| 19 | 1.2.1.2.1 | Draft Software Requirements |  | 3d | 2020-08-18 A | 2020-08-20 A | 17 | 100% |  |  | Lt Isfar; Lt Naim; Lt Usubbir; Lt Yamin | 60h | 60h | 1,000 | 1,000 |
| 20 | 1.2.1.2.2 | Obtain Necessary Resources |  | 3d | 2020-08-20 A | 2020-08-24 A | 19 | 100% |  |  | Lt Isfar; Lt Naim; Lt Usubbir; Lt Yamin | 60h | 60h | 45,000 | 45,000 |
| 21 | 1.2.1.2.3 | UI module customization |  | 14d | 2020-08-24 A | 2020-09-06 A | 20 | 100% |  |  | Lt Usubbir; Lt Yamin; PC | 140h | 140h |  |  |
| 22 | 1.2.1.2.4 | Audience feedback |  | 1d | 2020-09-07 A | 2020-09-07 A | 21 | 100% |  |  | Lt Isfar; Lt Naim | 10h | 10h |  |  |
| 23 | 1.2.1.2.5 | Presentation |  | 1d | 2020-09-07 A | 2020-09-08 A | 22 | 100% |  |  | Lt Isfar; Lt Naim | 10h | 10h |  |  |
| 24 | 1.2.1.2.6 | Necessary Correction |  | 1d | 2020-09-08 A | 2020-09-08 A | 23 | 100% |  |  | Lt Isfar; Lt Naim; Lt Usubbir; Lt Yamin | 20h | 20h |  |  |
| 25 | 1.2.1.2.7 | Miscellaneous |  | 1d | 2020-09-08 A | 2020-09-09 A | 24 | 100% |  |  | Lt Isfar; Lt Naim; Lt Usubbir; Lt Yamin | 20h | 20h |  |  |
| 26 | 1.2.1.2.8 | Second Phase Finalization | milestone | 0d | 2020-09-09 A | 2020-09-09 A | 25 | 100% |  |  | Lt Isfar; Lt Naim; Lt Usubbir; Lt Yamin |  |  |  |  |

| ID | WBS | Task | Type | Duration | Start | Finish | Predecessors | Total slack | Resources | Work | Cost |
| --- | --- | --- | --- | --- | --- | --- | --- | --- | --- | --- | --- |
| 27 | 1.3 | **Execution** |  | 121d | 2020-09-09 | 2021-04-22 |  | 0d |  | 1980h | 9,000 |
| 28 | 1.3.1 | **Design** |  | 39d | 2020-09-09 | 2020-10-13 |  | 0d |  | 560h |  |
| 29 | 1.3.1.1 | Analyse Software Specification |  | 8d | 2020-09-09 | 2020-09-16 | 26 | 0d | Lt Isfar; Lt Naim; Lt Usubbir; Lt Yamin | 160h |  |
| 30 | 1.3.1.2 | Software Implementation |  | 8d | 2020-09-16 | 2020-09-23 | 29 | 0d | Lt Isfar; Lt Naim; Lt Usubbir; Lt Yamin; PC; Portable Server(3 TB SSD) | 160h |  |
| 31 | 1.3.1.3 | Interface Development |  | 21d | 2020-09-23 | 2020-10-12 | 30 | 0d | Lt Isfar; Lt Naim; PC; Portable Server(3 TB SSD) | 210h |  |
| 32 | 1.3.1.4 | Progress Presentation |  | 1d | 2020-10-12 | 2020-10-13 | 31 | 0d | Lt Usubbir; Lt Yamin | 10h |  |
| 33 | 1.3.1.5 | Approval |  | 1d | 2020-10-13 | 2020-10-13 | 32 | 0d | Lt Isfar; Lt Naim; Lt Usubbir; Lt Yamin | 20h |  |
| 34 | 1.3.1.6 | Design completion | milestone | 0d | 2020-10-13 | 2020-10-13 | 33 | 0d | Lt Isfar; Lt Naim; Lt Usubbir; Lt Yamin |  |  |
| 35 | 1.3.2 | **Development** |  | 36d | 2020-10-13 | 2021-03-07 |  | 0d |  | 710h | 2,000 |
| 36 | 1.3.2.1 | Back End Analysis |  | 5d | 2020-10-13 | 2021-02-07 | 34 | 0d | Lt Isfar; Lt Naim; Lt Usubbir; Lt Yamin | 100h |  |
| 37 | 1.3.2.2 | Third Party Data Analysis |  | 8d | 2021-02-08 | 2021-02-14 | 36 | 0d | Lt Isfar; Lt Naim; Lt Usubbir; Lt Yamin | 160h |  |
| 38 | 1.3.2.3 | Distribution of Work |  | 1d | 2021-02-15 | 2021-02-15 | 37 | 0d | Lt Isfar; Lt Naim; Lt Usubbir; Lt Yamin | 20h |  |
| 39 | 1.3.2.4 | Forming Up Back End |  | 21d | 2021-02-15 | 2021-03-04 | 38 | 0d | Lt Isfar; Lt Naim; Lt Usubbir; Lt Yamin; PC; Portable Server(3 TB SSD) | 420h | 1,000 |
| 40 | 1.3.2.5 | Necessary Correction |  | 1d | 2021-03-04 | 2021-03-07 | 39 | 0d | Lt Usubbir; Lt Yamin; PC; Portable Server(3 TB SSD) | 10h | 1,000 |
| 41 | 1.3.2.6 | Development Completion | milestone | 0d | 2021-03-07 | 2021-03-07 | 40 | 0d | Lt Isfar; Lt Naim; Lt Usubbir; Lt Yamin |  |  |
| 42 | 1.3.3 | **Test And Trail** |  | 15d | 2021-03-07 | 2021-03-18 |  | 0d |  | 150h |  |
| 43 | 1.3.3.1 | Trial Plan |  | 3d | 2021-03-07 | 2021-03-09 | 41 | 0d | Lt Isfar; Lt Naim | 30h |  |
| 44 | 1.3.3.2 | Trial With Ibas+, CORO and Formation HQ |  | 8d | 2021-03-09 | 2021-03-16 | 43 | 0d | Lt Usubbir; Lt Yamin; PC; Portable Server(3 TB SSD) | 80h |  |
| 45 | 1.3.3.3 | Trial Matching Keyword From Server |  | 3d | 2021-03-16 | 2021-03-18 | 44 | 0d | Lt Isfar; Lt Naim; PC; Portable Server(3 TB SSD) | 30h |  |
| 46 | 1.3.3.4 | Testing Server Response |  | 1d | 2021-03-18 | 2021-03-18 | 45 | 0d | Lt Isfar; Lt Naim; PC; Portable Server(3 TB SSD) | 10h |  |
| 47 | 1.3.3.5 | Test Completion | milestone | 0d | 2021-03-18 | 2021-03-18 | 46 | 0d | Lt Isfar; Lt Naim; Lt Usubbir; Lt Yamin |  |  |
| 48 | 1.3.4 | **Documentation** |  | 15d | 2021-03-18 | 2021-04-08 |  | 0d |  | 280h | 2,000 |
| 49 | 1.3.4.1 | Preparation of Documents |  | 3d | 2021-03-18 | 2021-03-22 | 47 | 0d | Lt Isfar; Lt Naim; Lt Usubbir; Lt Yamin | 60h | 1,000 |
| 50 | 1.3.4.2 | Authentication From Formation HQ |  | 8d | 2021-03-22 | 2021-04-05 | 49 | 0d | Lt Isfar; Lt Naim; Lt Usubbir; Lt Yamin | 160h |  |
| 51 | 1.3.4.3 | Authentication From CORO |  | 1d | 2021-04-05 | 2021-04-06 | 50 | 0d | Lt Isfar; Lt Naim | 10h |  |
| 52 | 1.3.4.4 | Authentication From Ibas+ |  | 1d | 2021-04-06 | 2021-04-06 | 51 | 0d | Lt Usubbir; Lt Yamin | 10h |  |
| 53 | 1.3.4.5 | Analyse all user documentation |  | 1d | 2021-04-06 | 2021-04-07 | 52 | 0d | Lt Isfar; Lt Naim; Lt Usubbir; Lt Yamin | 20h |  |
| 54 | 1.3.4.6 | Miscellaneous |  | 1d | 2021-04-07 | 2021-04-08 | 53 | 0d | Lt Isfar; Lt Naim; Lt Usubbir; Lt Yamin | 20h | 1,000 |
| 55 | 1.3.4.7 | Documentation Completion | milestone | 0d | 2021-04-08 | 2021-04-08 | 54 | 0d | Lt Isfar; Lt Naim; Lt Usubbir; Lt Yamin |  |  |

| ID | WBS | Task | Type | Duration | Start | Finish | Predecessors | Total slack | Resources | Work | Cost |
| --- | --- | --- | --- | --- | --- | --- | --- | --- | --- | --- | --- |
| 56 | 1.3.5 | **Training** |  | 10d | 2021-04-08 | 2021-04-18 |  | 0d |  | 160h | 3,000 |
| 57 | 1.3.5.1 | Develop Training Planning |  | 3d | 2021-04-08 | 2021-04-11 | 55 | 0d | Lt Usubbir; Lt Yamin | 30h |  |
| 58 | 1.3.5.2 | Interface Orientation |  | 1d | 2021-04-12 | 2021-04-12 | 57 | 0d | Lt Isfar; Lt Naim | 10h |  |
| 59 | 1.3.5.3 | Server Load Test |  | 3d | 2021-04-12 | 2021-04-14 | 58 | 0d | Lt Isfar; Lt Naim; Lt Usubbir; Lt Yamin; PC; Portable Server(3 TB SSD) | 60h |  |
| 60 | 1.3.5.4 | Conduct Exercise |  | 3d | 2021-04-14 | 2021-04-18 | 59 | 0d | Lt Isfar; Lt Naim; Lt Usubbir; Lt Yamin; PC; Portable Server(3 TB SSD) | 60h | 2,000 |
| 61 | 1.3.5.5 | Product Release | milestone | 0d | 2021-04-18 | 2021-04-18 | 60 | 0d | Lt Isfar; Lt Naim; Lt Usubbir; Lt Yamin |  | 1,000 |
| 62 | 1.3.6 | **Final Review** |  | 6d | 2021-04-18 | 2021-04-22 |  | 0d |  | 120h | 2,000 |
| 63 | 1.3.6.1 | Review with Clients |  | 1d | 2021-04-18 | 2021-04-18 | 61 | 0d | Lt Isfar; Lt Naim; Lt Usubbir; Lt Yamin | 20h | 1,000 |
| 64 | 1.3.6.2 | Lessons Learnt |  | 1d | 2021-04-19 | 2021-04-19 | 63 | 0d | Lt Isfar; Lt Naim; Lt Usubbir; Lt Yamin | 20h |  |
| 65 | 1.3.6.3 | Maintainance Team |  | 4d | 2021-04-19 | 2021-04-22 | 64 | 0d | Lt Isfar; Lt Naim; Lt Usubbir; Lt Yamin; PC; Portable Server(3 TB SSD) | 80h | 1,000 |
| 66 | 1.3.6.4 | Review Complete | milestone | 0d | 2021-04-22 | 2021-04-22 | 65 | 0d | Lt Isfar; Lt Naim; Lt Usubbir; Lt Yamin |  |  |
| 67 | 1.4 | **Closing** |  | 1d | 2021-04-22 | 2021-04-22 |  | 0d |  | 20h | 2,000 |
| 68 | 1.4.1 | Closing Party |  | 1d | 2021-04-22 | 2021-04-22 | 66 | 0d | Lt Isfar; Lt Naim; Lt Usubbir; Lt Yamin | 20h | 2,000 |
| 69 | 1.4.2 | Project Completion | milestone | 0d | 2021-04-22 | 2021-04-22 | 68 | 0d | Lt Isfar; Lt Naim; Lt Usubbir; Lt Yamin |  |  |
